# basic_one_task_test

Schedule from MS Project, 2018-04-12 to 2018-05-14, A marks actual dates.

## Calendars

- Standard: Mon-Fri 08:00-12:00, 13:00-17:00; Sat-Sun off.

## Resources

| Resource | Group |
| --- | --- |
| 王嘉良 |  |
| 张翔宇 |  |
| 柯美忠 |  |
| 全晓虎 |  |
| 刘艳萍 |  |
| 李文涛 |  |
| 郭飞翔 | 医疗事业部全员 |
| 王德文 | 医疗事业部全员 |
| 王修超 | 医疗事业部全员 |
| 陈汐豪 | 医疗事业部全员 |
| 文征 | 医疗事业部全员 |
| 尹烈 | 医疗事业部全员 |
| 韩正波 | 医疗事业部全员 |
| 滕松涛 | 医疗事业部全员 |

## Schedule

| ID | WBS | Task | Duration | Start | Finish | Predecessors | Complete | Remaining | Total slack | Constraint | Resources | Work | Actual work |
| --- | --- | --- | --- | --- | --- | --- | --- | --- | --- | --- | --- | --- | --- |
| 44 | 1 | **咨询合同签署** | 1d | 2018-04-27 | 2018-04-27 |  |  |  | 0d | start no earlier than 2018-04-27 | 郭飞翔; 王德文; 陈汐豪 | 24h |  |
| 43 | 1.1 | 确认咨询公司并草拟合同 | 1d | 2018-04-27 | 2018-04-28 |  |  |  | 0d | start no earlier than 2018-04-27 | 陈汐豪; 郭飞翔; 王德文 | 48h |  |
| 42 | 1.2 | 根据股东意见或重启咨询服务 | 1d | 2018-04-26 | 2018-04-26 | 41SS |  |  | 0d | start no earlier than 2018-04-26 | 郭飞翔; 王德文; 陈汐豪 | 24h |  |
| 41 | 1.3 | 专家研讨会意见完善商业计划 | 2d | 2018-04-26 | 2018-04-28 |  |  |  | 0d | start no earlier than 2018-04-26 |  | 24h |  |
| 40 | 1.4 | 撰写商业计划书 | 3d | 2018-04-19 A | 2018-04-23 |  | 83% | 0.5d | 0d | start no earlier than 2018-04-19 | 郭飞翔; 王德文; 王修超; 陈汐豪; 滕松涛 | 200h | 180h |
| 39 | 1.5 | 咨询公司商业计划初审 | 1d | 2018-04-17 A | 2018-04-17 |  | 100% | 0d | 0d | start no earlier than 2018-04-17 | 陈汐豪; 郭飞翔 | 16h | 16h |
| 38 | 1.6 | 主导咨询搭建计划书架构 | 1d | 2018-04-17 A | 2018-04-17 |  | 100% | 0d | 0d | start no earlier than 2018-04-17 | 陈汐豪; 郭飞翔; 王德文 | 24h | 24h |
| 37 | 1.7 | 配合咨询公司分析商业计划书内容 | 2d | 2018-04-16 A | 2018-04-17 |  | 100% | 0d | 0d | start no earlier than 2018-04-16 | 陈汐豪; 王德文 | 32h | 32h |
| 36 | 1.8 | 市场分析数据采集并整理成稿 | 2d | 2018-04-12 A | 2018-04-13 |  | 100% | 0d | 0d | start no earlier than 2018-04-12 | 王修超 | 16h | 16h |
| 35 | 1.9 | 咨询公司确认工作细节 | 1d | 2018-04-13 A | 2018-04-13 |  | 100% | 0d | 0d | start no earlier than 2018-04-13 |  | 8h | 8h |
| 34 | 1.10 | 启动四大咨询公司服务商讨 | 0.33d | 2018-04-12 A | 2018-04-12 |  | 100% | 0d | 0d | start no earlier than 2018-04-12 | 郭飞翔; 王德文; 陈汐豪 | 8h | 8h |
| 33 | 2 | **商业计划书及市场推进** | 12d | 2018-04-12 A | 2018-04-28 |  | 100% | 0d | 0d | start no earlier than 2018-04-12 |  | 520h | 284h |
| 32 | 2.1 | 云药房业务需求分析访谈 | 3d | 2018-04-25 | 2018-04-28 |  |  |  | 0d | start no earlier than 2018-04-25 | 王德文; 文征; 尹烈 | 96h |  |
| 31 | 2.2 | 联影-影像云业务需求分析 | 4d | 2018-04-20 A | 2018-04-25 |  | 25% | 3d | 0d | start no earlier than 2018-04-20 | 王德文; 文征; 尹烈 | 144h | 46.08h |
| 30 | 2.3 | 万达-健康武汉总体业务流需求分析 | 1d | 2018-04-19 A | 2018-04-19 |  | 100% | 0d | 0d | start no earlier than 2018-04-19 | 王德文; 文征; 尹烈; 韩正波 | 32h | 32h |
| 29 | 2.4 | 平安医疗商保及家医签约需求资料梳理 | 3d | 2018-04-17 A | 2018-04-19 |  | 100% | 0d | 0d | start no earlier than 2018-04-17 | 王德文 | 24h | 24h |
| 28 | 2.5 | 城市医伴“汉阳模式”系统需求访谈 | 1d | 2018-04-13 A | 2018-04-13 |  | 100% | 0d | 0d | start no earlier than 2018-04-13 | 王德文; 陈汐豪 | 16h | 16h |
| 27 | 2.6 | 平安医疗需求访谈 | 1d | 2018-04-12 A | 2018-04-12 |  | 100% | 0d | 0d | start no earlier than 2018-04-12 | 王德文 | 8h | 8h |
| 26 | 3 | **B端合作伙伴技术对接** | 12d | 2018-04-12 A | 2018-04-28 |  | 100% | 0d | 0d |  |  | 320h | 126.08h |
| 25 | 3.1 | 健康武汉系统备份 | 16d | 2018-04-23 A | 2018-05-14 |  | 14% | 13.75d | 0d | start no earlier than 2018-04-23 | 韩正波 | 176h | 17.6h |
| 24 | 3.2 | 影像云需求分析及改造方案 | 3d | 2018-04-25 | 2018-04-28 |  |  |  | 0d | start no earlier than 2018-04-25 | 文征; 尹烈; 韩正波 | 96h |  |
| 23 | 3.3 | 云药房需求分析及改造方案 | 3d | 2018-04-25 | 2018-04-28 |  |  |  | 0d | start no earlier than 2018-04-25 | 文征; 尹烈; 韩正波 | 96h |  |
| 22 | 3.4 | 输出现状分析及改造方案1.0版本 | 3d | 2018-04-23 A | 2018-04-25 | 20, 21, 23SF, 24SF | 83% | 0.5d | 0d | start no earlier than 2018-04-23 | 王德文 | 24h | 19.2h |
| 21 | 3.5 | 商保、家医改造方案完成 | 1d | 2018-04-20 A | 2018-04-22 |  | 100% | 0d | 0d | start no earlier than 2018-04-20 | 文征; 尹烈 | 48h | 14.4h |
| 20 | 3.6 | 商保、家医需求分析完成 | 1d | 2018-04-20 A | 2018-04-20 |  | 62% | 0.38d | 0d | start no earlier than 2018-04-20 | 文征; 尹烈; 王德文 | 24h | 14.4h |
| 19 | 3.7 | 现状分析报告完成 | 1d | 2018-04-19 A | 2018-04-19 | 14FF, 17FF | 100% | 0d | 0d | start no earlier than 2018-04-19 | 王德文; 文征; 尹烈 | 24h | 24h |
| 18 | 3.8 | APP实名认证测试 | 4d | 2018-04-17 A | 2018-04-20 |  | 56% | 1.75d | 0d | start no earlier than 2018-04-17 | 韩正波 | 32h | 17.92h |
| 17 | 3.9 | 重点业务系统现状分析报告 | 3d | 2018-04-16 A | 2018-04-18 |  | 100% | 0d | 0d | start no earlier than 2018-04-16 | 文征; 尹烈 | 48h | 48h |
| 16 | 3.10 | 默联-复旦微银行卡认证开发协调 | 11d | 2018-04-13 A | 2018-04-28 |  | 15% | 9.25d | 0d | start no earlier than 2018-04-13 | 韩正波 | 128h | 29.44h |
| 15 | 3.11 | 复旦微电子数据备份配置完成 | 2d | 2018-04-12 A | 2018-04-13 |  | 100% | 0d | 0d | start no earlier than 2018-04-12 | 韩正波 | 16h | 16h |
| 14 | 3.12 | 数据基础平台现状分析报告 | 2d | 2018-04-12 A | 2018-04-14 |  | 100% | 0d | 0d | start no earlier than 2018-04-12 | 文征; 尹烈 | 48h | 48h |

| ID | WBS | Task | Duration | Start | Finish | Predecessors | Complete | Remaining | Total slack | Constraint | Resources | Work | Actual work |
| --- | --- | --- | --- | --- | --- | --- | --- | --- | --- | --- | --- | --- | --- |
| 13 | 4 | **健康武汉项目推进** | 23d | 2018-04-12 A | 2018-05-14 |  | 100% | 0d | 0d |  |  | 760h | 248.96h |
| 12 | 4.1 | 集团领导与卫计委领导会晤 | 1d | 2018-04-24 | 2018-04-24 |  |  |  | 0d | start no earlier than 2018-04-24 | 王嘉良; 柯美忠; 郭飞翔; 王德文; 张翔宇 | 40h |  |
| 11 | 5 | **高层领导会晤** | 1d | 2018-04-24 | 2018-04-24 |  |  |  | 0d |  |  | 40h |  |
| 10 | 5.1 | 健康医疗专家研讨会 | 1d | 2018-04-25 | 2018-04-25 |  |  |  | 0d | start no earlier than 2018-04-25 | 张翔宇; 柯美忠; 全晓虎; 刘艳萍; 李文涛; 王嘉良 | 56h |  |
| 9 | 5.2 | 平安医疗合作方案定稿 | 3d | 2018-04-19 A | 2018-04-23 |  | 54% | 1.38d | 0d | start no earlier than 2018-04-19 | 王德文 | 40h | 12.8h |
| 8 | 5.3 | 股东领导及公司领导时间确定 | 3d | 2018-04-19 A | 2018-04-23 |  | 50% | 1.5d | 0d | start no earlier than 2018-04-19 | 郭飞翔 | 40h | 12h |
| 7 | 5.4 | 医院专家代表、基金公司代表议程敲定 | 3d | 2018-04-19 A | 2018-04-23 | 5FF | 66% | 1d | 0d | start no earlier than 2018-04-19 | 郭飞翔 | 40h | 16.8h |
| 6 | 5.5 | 品医汇、健康之路、一脉阳光会议议程敲定 | 3d | 2018-04-19 A | 2018-04-23 | 5FF | 66% | 1d | 0d | start no earlier than 2018-04-19 | 郭飞翔; 陈汐豪 | 80h | 48h |
| 5 | 5.6 | 研讨会会议议程定稿 | 1d | 2018-04-19 A | 2018-04-19 |  | 100% | 0d | 0d | start no earlier than 2018-04-19 | 郭飞翔; 王修超 | 16h | 16h |
| 4 | 5.7 | 毕马威参会议程敲定 | 1d | 2018-04-19 A | 2018-04-19 | 2FF | 100% | 0d | 0d | start no earlier than 2018-04-19 | 王德文 | 8h | 8h |
| 3 | 5.8 | 平安医疗参会议程敲定 | 2d | 2018-04-17 A | 2018-04-18 | 2FF | 100% | 0d | 0d | start no earlier than 2018-04-17 | 王德文 | 16h | 16h |
| 2 | 5.9 | 研讨会议程筹备拟稿 | 1d | 2018-04-16 A | 2018-04-16 |  | 100% | 0d | 0d | start no earlier than 2018-04-16 | 郭飞翔; 王德文; 陈汐豪; 王修超 | 32h | 32h |
| 1 | 6 | 健康医疗专家研讨会 | 8d | 2018-04-16 A | 2018-04-25 |  | 100% | 0d | 0d |  |  | 328h | 161.6h |
