Schedule from OmniPlan.
Project start 2018-04-12

## Resources

| Resource | Group |
| --- | --- |
| 资源 1 | staff |
| 设备 1 | equipment |
| 素材 1 | material |
| 群组 1 | group |
| 郭飞翔 | staff |
| 王德文 | staff |
| 王修超 | staff |
| 陈汐豪 | staff |
| 文征 | staff |
| 尹烈 | staff |
| 韩正波 | staff |
| 滕松涛 | staff |
| 王嘉良 | staff |
| 张翔宇 | staff |
| 柯美忠 | staff |
| 全晓虎 | staff |
| 刘艳萍 | staff |
| 李文涛 | staff |
| 医疗事业部全员 | group |

## Schedule

| ID | WBS | Task | Type | Predecessors | Complete | Constraint | Resources | Work | Actual work |
| --- | --- | --- | --- | --- | --- | --- | --- | --- | --- |
| 1 | 1 | **健康医疗专家研讨会** |  |  |  |  |  |  |  |
| 2 | 1.1 | 研讨会议程筹备拟稿 |  |  | 100% | start no earlier than 2018-04-16 | 郭飞翔; 王德文; 陈汐豪; 王修超 | 32h | 32h |
| 3 | 1.2 | 平安医疗参会议程敲定 |  | 2 | 100% | start no earlier than 2018-04-17 | 王德文 | 16h | 16h |
| 4 | 1.3 | 毕马威参会议程敲定 |  | 2 | 100% | start no earlier than 2018-04-19 | 王德文 | 8h | 8h |
| 5 | 1.4 | 研讨会会议议程定稿 |  |  | 100% | start no earlier than 2018-04-19 | 郭飞翔; 王修超 | 16h | 16h |
| 6 | 1.5 | 品医汇、健康之路、一脉阳光会议议程敲定 |  |  | 100% | start no earlier than 2018-04-19 | 郭飞翔; 陈汐豪 | 80h | 80h |
| 7 | 1.6 | 医院专家代表、基金公司代表议程敲定 |  |  | 100% | start no earlier than 2018-04-19 | 郭飞翔 | 40h | 40h |
| 8 | 1.7 | 股东领导及公司领导时间确定 |  |  | 100% | start no earlier than 2018-04-19 | 郭飞翔 | 40h | 40h |
| 9 | 1.8 | 平安医疗合作方案定稿 |  |  | 100% | start no earlier than 2018-04-19 | 王德文 | 40h | 40h |
| 10 | 1.9 | 健康医疗专家研讨会 | milestone | 2, 3, 4, 5, 6, 7, 8, 9, 12 |  | start no earlier than 2018-04-25 | 柯美忠; 王嘉良; 张翔宇; 全晓虎; 郭飞翔; 刘艳萍; 李文涛 |  |  |
| 11 | 2 | **高层领导会晤** |  |  |  |  |  |  |  |
| 12 | 2.1 | 集团领导与卫计委领导会晤 | milestone |  |  | start no earlier than 2018-04-25 | 王嘉良; 张翔宇; 郭飞翔; 王德文 |  |  |
| 13 | 3 | **健康武汉项目推进** |  |  |  |  |  |  |  |
| 14 | 3.1 | 数据基础平台现状分析报告 |  |  | 100% | start no earlier than 2018-04-12 | 文征; 尹烈 | 48h | 48h |
| 15 | 3.2 | 复旦微电子数据备份配置完成 |  |  | 100% | start no earlier than 2018-04-12 | 韩正波 | 16h | 16h |
| 16 | 3.3 | 默联-复旦微银行卡认证开发协调 |  |  | 23% | start no earlier than 2018-04-13 | 韩正波 | 128h | 29.44h |
| 17 | 3.4 | 重点业务系统现状分析报告 |  |  | 100% | start no earlier than 2018-04-16 | 文征; 尹烈 | 48h | 48h |
| 18 | 3.5 | APP实名认证测试 |  |  | 100% | start no earlier than 2018-04-17 | 韩正波 | 32h | 32h |
| 19 | 3.6 | 现状分析报告完成 |  | 14, 17 | 100% | start no earlier than 2018-04-19 | 王德文; 文征; 尹烈 | 24h | 24h |
| 20 | 3.7 | 商保、家医需求分析完成 |  |  | 100% | start no earlier than 2018-04-20 | 文征; 尹烈; 王德文 | 24h | 24h |
| 21 | 3.8 | 商保、家医改造方案完成 |  |  | 100% | start no earlier than 2018-04-20 | 文征; 尹烈 | 48h | 48h |
| 22 | 3.9 | 输出现状分析及改造方案1.0版本 | milestone | 19, 20, 21 |  | start no earlier than 2018-04-25 | 王德文 |  |  |
| 23 | 3.10 | 健康武汉系统备份 |  |  | 15% | start no earlier than 2018-04-23 | 韩正波 | 312h | 48h |
| 24 | 3.11 | 中心医院现场测试挂号就医号流程 |  |  |  | start no earlier than 2018-05-02 | 文征; 尹烈; 韩正波 | 8h |  |
| 25 | 3.12 | 儿童医院现场测试挂号就医流程 |  |  |  | start no earlier than 2018-05-02 | 文征; 尹烈; 韩正波 | 8h |  |
| 26 | 3.13 | 梳理并输出测试点文档 |  |  |  | start no earlier than 2018-05-02 | 尹烈 | 8h |  |
| 27 | 3.14 | 梳理挂号业务流程的bug协调厂商修复 |  |  |  | start no earlier than 2018-05-03 | 文征 | 48h |  |
| 28 | 3.15 | 万达、创业进行调研流程技术梳理 |  |  |  | start no earlier than 2018-05-03 | 文征 | 8h |  |
| 29 | 3.16 | 编写并输出挂号流程测试案例 |  |  |  | start no earlier than 2018-05-04 | 尹烈 | 8h |  |
| 30 | 3.17 | 部分功能的回归测试 |  |  |  | start no earlier than 2018-05-04 | 文征; 尹烈; 韩正波 | 8h |  |

| ID | WBS | Task | Type | Predecessors | Complete | Constraint | Resources | Work | Actual work |
| --- | --- | --- | --- | --- | --- | --- | --- | --- | --- |
| 31 | 4 | **B端合作伙伴技术对接** |  |  |  |  |  |  |  |
| 32 | 4.1 | 平安医疗需求访谈 |  |  | 100% | start no earlier than 2018-04-12 | 王德文 | 8h | 8h |
| 33 | 4.2 | 城市医伴“汉阳模式”系统需求访谈 |  |  | 100% | start no earlier than 2018-04-13 | 王德文; 陈汐豪 | 16h | 16h |
| 34 | 4.3 | 中电数据合作协议初稿完成 |  |  | 100% | start no earlier than 2018-04-18 | 王修超 | 24h | 24h |
| 35 | 4.4 | 平安医疗商保及家医签约需求资料梳理 |  |  | 100% | start no earlier than 2018-04-17 | 王德文 | 24h | 24h |
| 36 | 4.5 | 万达-健康武汉总体业务流需求分析 |  |  | 100% | start no earlier than 2018-04-19 | 王德文; 文征; 尹烈; 韩正波 | 32h | 32h |
| 37 | 4.6 | 与深圳品医汇对接云药房、云诊所需求 |  |  |  | start no earlier than 2018-05-02 | 王修超; 陈汐豪; 滕松涛 | 8h |  |
| 38 | 4.7 | 优化与合作伙伴对接ppt |  |  |  | start no earlier than 2018-05-03 | 王修超; 陈汐豪; 滕松涛 | 8h |  |
| 39 | 4.8 | 拟定品医汇初稿 |  |  |  | start no earlier than 2018-05-04 | 王修超; 陈汐豪; 滕松涛 | 8h |  |
| 40 | 5 | **商业计划书及市场推进** |  |  |  | start no earlier than 2018-04-12 |  |  |  |
| 41 | 5.1 | 启动四大咨询公司服务商讨 |  |  | 100% | start no earlier than 2018-04-12 | 郭飞翔; 王德文; 陈汐豪 | 24h | 24h |
| 42 | 5.2 | 咨询公司确认工作细节 |  |  | 100% | start no earlier than 2018-04-13 | 王德文 | 8h | 8h |
| 43 | 5.3 | 市场分析数据采集并整理成稿 |  |  | 100% | start no earlier than 2018-04-12 | 王修超 | 16h | 16h |
| 44 | 5.4 | 配合咨询公司分析商业计划书内容 |  |  | 100% | start no earlier than 2018-04-16 | 陈汐豪; 王德文 | 32h | 32h |
| 45 | 5.5 | 主导咨询搭建计划书架构 |  |  | 100% | start no earlier than 2018-04-17 | 陈汐豪; 郭飞翔; 王德文 | 24h | 24h |
| 46 | 5.6 | 咨询公司商业计划初审 |  |  | 100% | start no earlier than 2018-04-17 | 陈汐豪; 郭飞翔 | 16h | 16h |
| 47 | 5.7 | 内部撰写商业计划书 |  |  | 100% | start no earlier than 2018-04-19 | 郭飞翔; 王德文; 王修超; 陈汐豪; 滕松涛 | 200h | 200h |
| 48 | 5.8 | 专家研讨会意见完善商业计划 |  |  | 100% | start no earlier than 2018-04-26 | 医疗事业部全员 | 24h | 24h |
| 49 | 5.9 | 根据股东意见或重启咨询服务 |  |  | 100% | start no earlier than 2018-04-26 | 郭飞翔; 王德文; 陈汐豪 | 24h | 24h |
| 50 | 5.10 | 确认咨询公司并草拟合同 | milestone | 43, 44, 45, 47, 48, 41, 42, 46, 49 |  | start no earlier than 2018-04-27 | 陈汐豪; 郭飞翔; 王德文 |  |  |
| 51 | 5.11 | 咨询合同签署 | milestone |  |  | start no earlier than 2018-05-04 | 郭飞翔; 王德文; 陈汐豪 |  |  |
| 52 | 5.12 | 实施路径及推广策略角度优化初稿 |  |  |  | start no earlier than 2018-05-02 | 陈汐豪 | 24h |  |
